# ABlockofCode

Schedule from MS Project, 2014-11-14 to 2015-06-12.

## Calendars

- Standard: Mon-Sun 08:00-12:00, 13:00-17:00.

## Resources

| Resource |
| --- |
| Nathan |
| Daniel |
| Tyler |
| Jacob |
| Greg |

## Schedule

| ID | WBS | Task | Type | Duration | Start | Finish | Predecessors | Total slack | Free slack | Constraint | Resources | Work |
| --- | --- | --- | --- | --- | --- | --- | --- | --- | --- | --- | --- | --- |
| 1 | 1 | **A Block of Code** |  | 211d | 2014-11-14 | 2015-06-12 |  | 0d |  |  |  | 7056h |
| 2 | 1.1 | Capstones Assigned | milestone, manual | 0d | 2014-11-14 | 2014-11-14 |  |  |  |  |  |  |
| 3 | 1.2 | **Complete Rev 1** |  | 187d | 2014-11-26 | 2015-05-31 |  | 0d |  |  |  | 3960h |
| 4 | 1.2.1 | **Generate Concepts** |  | 54d | 2014-11-26 | 2015-01-18 | 2 | 0d |  |  |  | 1160h |
| 5 | 1.2.1.1 | Meet with Advisor | manual | 1d | 2014-11-26 | 2014-11-26 | 2 |  |  |  | Nathan; Daniel; Greg; Jacob; Tyler | 40h |
| 6 | 1.2.1.2 | Generate and Document Ideas for 5 Design Areas |  | 18d | 2014-12-23 | 2015-01-09 | 5 | 154d |  | finish no earlier than 2015-01-09 | Nathan; Daniel; Greg; Jacob; Tyler | 720h |
| 7 | 1.2.1.3 | Meet with Sponsors | manual | 1d | 2015-01-09 | 2015-01-09 |  |  |  |  | Nathan; Daniel; Greg; Jacob; Tyler | 40h |
| 8 | 1.2.1.4 | Decide on Design Direction |  | 9d | 2015-01-10 | 2015-01-18 | 7 | -6d | 0d |  | Nathan; Daniel; Greg; Jacob; Tyler | 360h |
| 9 | 1.2.2 | **Propose Project** |  | 21d | 2015-01-19 | 2015-02-08 | 8 | -6d | 0d |  |  | 472h |
| 10 | 1.2.2.1 | Create Proposal Draft |  | 5d | 2015-01-19 | 2015-01-23 |  | 0d |  |  | Daniel | 40h |
| 11 | 1.2.2.2 | Create Project Schedule Draft |  | 5d | 2015-01-19 | 2015-01-23 |  | -6d | 0d |  | Greg | 40h |
| 12 | 1.2.2.3 | Review Proposal with team |  | 4d | 2015-01-24 | 2015-01-27 | 10 | 0d |  |  | Daniel; Greg; Jacob; Nathan; Tyler | 160h |
| 13 | 1.2.2.4 | Review Project Schedule with team |  | 4d | 2015-01-24 | 2015-01-27 | 11 | -6d | 0d |  | Daniel; Greg; Jacob; Nathan; Tyler | 160h |
| 14 | 1.2.2.5 | Revise Proposal |  | 3d | 2015-01-28 | 2015-01-30 | 12 | 0d |  |  | Daniel; Nathan | 48h |
| 15 | 1.2.2.6 | Revise Project Schedule |  | 3d | 2015-01-28 | 2015-01-30 | 13 | -6d | 0d |  | Greg | 24h |
| 16 | 1.2.2.7 | Present Drafts to Advisor for Feedback | milestone | 0d | 2015-01-30 | 2015-01-30 | 14, 15 | 0d |  |  | Daniel; Greg; Jacob; Nathan; Tyler |  |
| 17 | 1.2.2.8 | Revise Drafts for Submission |  | 4d | 2015-01-31 | 2015-02-03 | 16 | 124d | 0d |  |  |  |
| 18 | 1.2.2.9 | Submit Docs to Sponsors | milestone | 0d | 2015-02-03 | 2015-02-03 | 17 | 124d | 0d |  |  |  |
| 19 | 1.2.2.10 | Feedback from Sponsors | milestone, manual | 0d | 2015-02-04 | 2015-02-04 | 18 |  |  |  |  |  |
| 20 | 1.2.2.11 | Create Test Plan | manual | 5d | 2015-02-04 | 2015-02-08 | 19 |  |  |  |  |  |
| 21 | 1.2.3 | **Revise Project Schedule** |  | 127d | 2015-01-25 | 2015-05-31 | 15 | 0d |  |  |  |  |
| 22 | 1.2.3.1 | Revise Project Schedule 1 | manual | 1d | 2015-01-25 | 2015-01-25 |  |  |  | start no earlier than 2015-01-25 |  |  |
| 23 | 1.2.3.2 | Revise Project Schedule 2 | manual | 1d | 2015-02-22 | 2015-02-22 |  |  |  | start no earlier than 2015-02-22 |  |  |
| 24 | 1.2.3.3 | Revise Project Schedule 3 | manual | 1d | 2015-03-29 | 2015-03-29 |  |  |  | start no earlier than 2015-03-29 |  |  |
| 25 | 1.2.3.4 | Revise Project Schedule 4 | manual | 1d | 2015-04-26 | 2015-04-26 |  |  |  | start no earlier than 2015-04-26 |  |  |
| 26 | 1.2.3.5 | Revise Project Schedule 5 | manual | 1d | 2015-05-31 | 2015-05-31 |  |  |  | start no earlier than 2015-05-31 |  |  |

| ID | WBS | Task | Type | Duration | Start | Finish | Predecessors | Total slack | Resources | Work |
| --- | --- | --- | --- | --- | --- | --- | --- | --- | --- | --- |
| 27 | 1.2.4 | **Prototype 5 Design Areas** |  | 28d | 2015-01-31 | 2015-02-27 |  | 0d |  | 1120h |
| 28 | 1.2.4.1 | **Prototype Power** |  | 28d | 2015-01-31 | 2015-02-27 |  | 0d | Jacob | 224h |
| 29 | 1.2.4.1.1 | Research Methods |  | 8d | 2015-01-31 | 2015-02-07 | 16 | 0d |  |  |
| 30 | 1.2.4.1.2 | Research Best Practices |  | 8d | 2015-02-08 | 2015-02-15 | 29 | 0d |  |  |
| 31 | 1.2.4.1.3 | Order Parts | milestone | 0d | 2015-02-07 | 2015-02-07 | 29 | 8d |  |  |
| 32 | 1.2.4.1.4 | Receive Parts | milestone | 0d | 2015-02-15 | 2015-02-15 | 30, 31 | 0d |  |  |
| 33 | 1.2.4.1.5 | Assemble Proof of Concept |  | 6d | 2015-02-16 | 2015-02-21 | 32 | 0d |  |  |
| 34 | 1.2.4.1.6 | Test Proof of Concept |  | 6d | 2015-02-22 | 2015-02-27 | 33 | 0d |  |  |
| 35 | 1.2.4.2 | **Prototype Communication** |  | 28d | 2015-01-31 | 2015-02-27 |  | 0d | Daniel | 224h |
| 36 | 1.2.4.2.1 | Research Methods |  | 8d | 2015-01-31 | 2015-02-07 | 16 | 0d |  |  |
| 37 | 1.2.4.2.2 | Research Best Practices |  | 8d | 2015-02-08 | 2015-02-15 | 36 | 0d |  |  |
| 38 | 1.2.4.2.3 | Order Parts | milestone | 0d | 2015-02-07 | 2015-02-07 | 36 | 8d |  |  |
| 39 | 1.2.4.2.4 | Receive Parts | milestone | 0d | 2015-02-15 | 2015-02-15 | 37, 38 | 0d |  |  |
| 40 | 1.2.4.2.5 | Assemble Proof of Concept |  | 6d | 2015-02-16 | 2015-02-21 | 39 | 0d |  |  |
| 41 | 1.2.4.2.6 | Test Proof of Concept |  | 6d | 2015-02-22 | 2015-02-27 | 40 | 0d |  |  |
| 42 | 1.2.4.3 | **Prototype Processing** |  | 28d | 2015-01-31 | 2015-02-27 |  | 0d | Nathan | 224h |
| 43 | 1.2.4.3.1 | Research Methods |  | 8d | 2015-01-31 | 2015-02-07 | 16 | 0d |  |  |
| 44 | 1.2.4.3.2 | Research Best Practices |  | 8d | 2015-02-08 | 2015-02-15 | 43 | 0d |  |  |
| 45 | 1.2.4.3.3 | Order Parts | milestone | 0d | 2015-02-07 | 2015-02-07 | 43 | 8d |  |  |
| 46 | 1.2.4.3.4 | Receive Parts | milestone | 0d | 2015-02-15 | 2015-02-15 | 44, 45 | 0d |  |  |
| 47 | 1.2.4.3.5 | Assemble Proof of Concept |  | 6d | 2015-02-16 | 2015-02-21 | 46 | 0d |  |  |
| 48 | 1.2.4.3.6 | Test Proof of Concept |  | 6d | 2015-02-22 | 2015-02-27 | 47 | 0d |  |  |
| 49 | 1.2.4.4 | **Prototype Form Factor** |  | 28d | 2015-01-31 | 2015-02-27 |  | 0d | Tyler | 224h |
| 50 | 1.2.4.4.1 | Research Methods |  | 8d | 2015-01-31 | 2015-02-07 | 16 | 0d |  |  |
| 51 | 1.2.4.4.2 | Research Best Practices |  | 8d | 2015-02-08 | 2015-02-15 | 50 | 0d |  |  |
| 52 | 1.2.4.4.3 | Order Parts | milestone | 0d | 2015-02-07 | 2015-02-07 | 50 | 8d |  |  |
| 53 | 1.2.4.4.4 | Receive Parts | milestone | 0d | 2015-02-15 | 2015-02-15 | 51, 52 | 0d |  |  |
| 54 | 1.2.4.4.5 | Assemble Proof of Concept |  | 6d | 2015-02-16 | 2015-02-21 | 53 | 0d |  |  |
| 55 | 1.2.4.4.6 | Test Proof of Concept |  | 6d | 2015-02-22 | 2015-02-27 | 54 | 0d |  |  |

| ID | WBS | Task | Type | Duration | Start | Finish | Predecessors | Total slack | Resources | Work |
| --- | --- | --- | --- | --- | --- | --- | --- | --- | --- | --- |
| 56 | 1.2.4.5 | **Prototype UI/IO** |  | 28d | 2015-01-31 | 2015-02-27 |  | 0d | Greg | 224h |
| 57 | 1.2.4.5.1 | Research Methods |  | 8d | 2015-01-31 | 2015-02-07 | 16 | 0d |  |  |
| 58 | 1.2.4.5.2 | Research Best Practices |  | 8d | 2015-02-08 | 2015-02-15 | 57 | 0d |  |  |
| 59 | 1.2.4.5.3 | Order Parts | milestone | 0d | 2015-02-07 | 2015-02-07 | 57 | 8d |  |  |
| 60 | 1.2.4.5.4 | Receive Parts | milestone | 0d | 2015-02-15 | 2015-02-15 | 58, 59 | 0d |  |  |
| 61 | 1.2.4.5.5 | Assemble Proof of Concept |  | 6d | 2015-02-16 | 2015-02-21 | 60 | 0d |  |  |
| 62 | 1.2.4.5.6 | Test Proof of Concept |  | 6d | 2015-02-22 | 2015-02-27 | 61 | 0d |  |  |
| 63 | 1.2.5 | Integrate Modular Prototypes for Full System |  | 8d | 2015-02-28 | 2015-03-07 | 27, 35, 42, 49, 56 | 0d | Daniel; Greg; Jacob; Nathan; Tyler | 320h |
| 64 | 1.2.6 | Test Full System |  | 5d | 2015-03-08 | 2015-03-12 | 63 | 0d | Daniel; Greg; Jacob; Nathan; Tyler | 200h |
| 65 | 1.2.7 | Record Video of Prototyped System Demonstration |  | 1d | 2015-03-13 | 2015-03-13 | 64 | 0d | Greg | 8h |
| 66 | 1.2.8 | Present Demonstration to Advisor and Sponsors for Feedback | milestone | 0d | 2015-03-13 | 2015-03-13 | 65 | 0d | Daniel; Greg; Jacob; Nathan; Tyler |  |
| 67 | 1.2.9 | [Break for Finals] | manual | 9d | 2015-03-14 | 2015-03-22 | 66 |  | Daniel; Greg; Jacob; Nathan; Tyler | 360h |
| 68 | 1.2.10 | Revise Designs based on Feedback |  | 4d | 2015-03-23 | 2015-03-26 | 67 | 0d | Daniel; Greg; Jacob; Nathan; Tyler | 160h |
| 69 | 1.2.11 | Test Revisions |  | 4d | 2015-03-27 | 2015-03-30 | 68 | 0d | Daniel; Greg; Jacob; Nathan; Tyler | 160h |
| 70 | 1.2.12 | Rev 1 Complete | milestone | 0d | 2015-03-30 | 2015-03-30 | 69 | 0d | Daniel; Greg; Jacob; Nathan; Tyler |  |
| 71 | 1.3 | **Complete Rev 2** |  | 69d | 2015-03-31 | 2015-06-07 | 70 | 0d |  | 2536h |
| 72 | 1.3.1 | Brainstorm Additional Features |  | 5d | 2015-03-31 | 2015-04-04 | 70 | 0d | Daniel; Greg; Jacob; Nathan; Tyler | 200h |
| 73 | 1.3.2 | Prototype Additional Features |  | 6d | 2015-04-05 | 2015-04-10 | 72 | 0d | Daniel; Greg; Jacob; Nathan; Tyler | 240h |
| 74 | 1.3.3 | **Complete Board Designs** |  | 37d | 2015-04-11 | 2015-05-17 |  | 0d | Jacob; Daniel | 592h |
| 75 | 1.3.3.1 | **Complete ERC Error-Free Schematics** |  | 16d | 2015-04-11 | 2015-04-26 |  | 0d |  |  |
| 76 | 1.3.3.1.1 | Research and Select Parts |  | 4d | 2015-04-11 | 2015-04-14 | 73 | 0d |  |  |
| 77 | 1.3.3.1.2 | Design Schematics |  | 4d | 2015-04-15 | 2015-04-18 | 76 | 0d |  |  |
| 78 | 1.3.3.1.3 | Review Schematics Internal to Group |  | 4d | 2015-04-19 | 2015-04-22 | 77 | 0d |  |  |
| 79 | 1.3.3.1.4 | Send Schematics to Third Party for Review |  | 4d | 2015-04-19 | 2015-04-22 | 77 | 0d |  |  |
| 80 | 1.3.3.1.5 | Revise Schematic |  | 4d | 2015-04-23 | 2015-04-26 | 78, 79 | 0d |  |  |

| ID | WBS | Task | Type | Duration | Start | Finish | Predecessors | Total slack | Resources | Work |
| --- | --- | --- | --- | --- | --- | --- | --- | --- | --- | --- |
| 81 | 1.3.3.2 | **Complete DRC Error-Free Layout** |  | 12d | 2015-04-27 | 2015-05-08 |  | 0d |  |  |
| 82 | 1.3.3.2.1 | Layout Boards |  | 4d | 2015-04-27 | 2015-04-30 | 75 | 0d |  |  |
| 83 | 1.3.3.2.2 | Review Layouts Internally to Group |  | 4d | 2015-05-01 | 2015-05-04 | 82 | 0d |  |  |
| 84 | 1.3.3.2.3 | Send Layouts to Third Party for Review |  | 4d | 2015-05-01 | 2015-05-04 | 82 | 0d |  |  |
| 85 | 1.3.3.2.4 | Revise Layouts |  | 4d | 2015-05-05 | 2015-05-08 | 83, 84 | 0d |  |  |
| 86 | 1.3.3.3 | Print Small Run of Boards in PSU LID |  | 2d | 2015-05-09 | 2015-05-10 | 85 | 0d |  |  |
| 87 | 1.3.3.4 | Assemble Small-Run Boards |  | 2d | 2015-05-11 | 2015-05-12 | 86 | 0d |  |  |
| 88 | 1.3.3.5 | Test Small-Run Boards |  | 2d | 2015-05-13 | 2015-05-14 | 87 | 0d |  |  |
| 89 | 1.3.3.6 | Print and Assemble Remaining Boards |  | 3d | 2015-05-15 | 2015-05-17 | 88 | 0d |  |  |
| 90 | 1.3.4 | **Complete Code** |  | 37d | 2015-04-11 | 2015-05-17 | 73 | 0d | Greg; Tyler | 592h |
| 91 | 1.3.4.1 | Code Block Identification |  | 6d | 2015-04-11 | 2015-04-16 |  | 0d |  |  |
| 92 | 1.3.4.2 | Code Program Execution |  | 6d | 2015-04-17 | 2015-04-22 | 91 | 0d |  |  |
| 93 | 1.3.4.3 | Code Error Detection |  | 6d | 2015-04-23 | 2015-04-28 | 92 | 0d |  |  |
| 94 | 1.3.4.4 | Code Block Communication |  | 6d | 2015-04-29 | 2015-05-04 | 93 | 0d |  |  |
| 95 | 1.3.4.5 | Test Full Code System |  | 7d | 2015-05-05 | 2015-05-11 | 94 | 0d |  |  |
| 96 | 1.3.4.6 | Revise System Components |  | 6d | 2015-05-12 | 2015-05-17 | 95 | 0d |  |  |
| 97 | 1.3.5 | **Complete Enclosures** |  | 9d | 2015-05-09 | 2015-05-17 |  | 0d | Nathan | 72h |
| 98 | 1.3.5.1 | Design Enclosures |  | 2d | 2015-05-09 | 2015-05-10 | 73, 81 | 0d |  |  |
| 99 | 1.3.5.2 | Print and Assemble Small-Run of Enclosures |  | 2d | 2015-05-11 | 2015-05-12 | 98 | 0d |  |  |
| 100 | 1.3.5.3 | Revise Enclosure Design |  | 2d | 2015-05-13 | 2015-05-14 | 99 | 0d |  |  |
| 101 | 1.3.5.4 | Print and Assemble Remaining Enclosures |  | 3d | 2015-05-15 | 2015-05-17 | 100 | 0d |  |  |
| 102 | 1.3.5.5 | Consider Specialized Output Block Designs |  | 4d | 2015-05-13 | 2015-05-16 | 99 | 1d |  |  |
| 103 | 1.3.6 | Integrate Modular Prototypes for Full System |  | 7d | 2015-05-18 | 2015-05-24 | 74, 90, 97 | 0d | Daniel; Greg; Jacob; Nathan; Tyler | 280h |
| 104 | 1.3.7 | Test Full System |  | 5d | 2015-05-25 | 2015-05-29 | 103 | 0d | Daniel; Greg; Jacob; Nathan; Tyler | 200h |
| 105 | 1.3.8 | Record Video of Prototyped System Demonstration |  | 1d | 2015-05-30 | 2015-05-30 | 104 | 0d | Daniel; Greg; Jacob; Nathan; Tyler | 40h |
| 106 | 1.3.9 | Present Demonstration to Advisor and Sponsors for Feedback | milestone | 0d | 2015-05-30 | 2015-05-30 | 105 | 13d | Daniel; Greg; Jacob; Nathan; Tyler |  |
| 107 | 1.3.10 | Revise Designs based on Tests and Feedback |  | 4d | 2015-05-31 | 2015-06-03 | 105 | 0d | Daniel; Greg; Jacob; Nathan; Tyler | 160h |
| 108 | 1.3.11 | Test Revisions |  | 4d | 2015-06-04 | 2015-06-07 | 107 | 0d | Daniel; Greg; Jacob; Nathan; Tyler | 160h |
| 109 | 1.3.12 | Rev 2 Complete | milestone | 0d | 2015-06-07 | 2015-06-07 | 108 | 0d | Daniel; Greg; Jacob; Nathan; Tyler |  |

| ID | WBS | Task | Duration | Start | Finish | Predecessors | Total slack | Free slack | Resources | Work |
| --- | --- | --- | --- | --- | --- | --- | --- | --- | --- | --- |
| 110 | 1.4 | **Create Presentation** | 14d | 2015-05-30 | 2015-06-12 |  | 0d |  | Daniel; Greg; Jacob; Nathan; Tyler | 560h |
| 111 | 1.4.1 | Design Poster | 4d | 2015-05-30 | 2015-06-02 | 104 | 9d | 0d |  |  |
| 112 | 1.4.2 | Send Poster off for Print | 1d | 2015-06-03 | 2015-06-03 | 111 | 9d |  |  |  |
| 113 | 1.4.3 | Create Presentation Slides | 4d | 2015-05-30 | 2015-06-02 | 104 | 10d |  |  |  |
| 114 | 1.4.4 | Write "Curriculum" | 4d | 2015-05-31 | 2015-06-03 | 105 | 9d |  |  |  |
| 115 | 1.4.5 | Present | 5d | 2015-06-08 | 2015-06-12 | 109 | 0d |  |  |  |
